How a schedule from an exported table changed from version to version. A marks actual dates.

## Version 1 (saved 2026-01-22)

Note of the change: Add CSV export of roadmap data

| Task | Start | Finish |
| --- | --- | --- |
| Data and Document Hub | 9/30/2025 | 11/30/2025 |
| Data folders | 9/30/2025 | 11/30/2025 |
| Data Pipelines | 9/30/2025 | 12/15/2025 |
| Data Extraction | 12/15/2025 | 1/31/2026 |
| MM specific Transformation | 1/15/2026 | 2/28/2026 |
| Schema Mapping | 2/15/2026 | 3/31/2026 |
| Validation | 9/30/2025 | 12/15/2025 |
| Generic Transformation | 4/1/2026 | 5/30/2026 |
| Modular UI | 1/1/2026 | 3/31/2026 |
| Custom MM DI | 3/31/2026 | 4/30/2026 |
| MM Integration | 3/31/2026 | 5/30/2026 |
| Unstructured Data extraction | 5/30/2026 | 7/30/2026 |
| Prompt management | 5/30/2026 | 7/30/2026 |
| Private Credit platform integration | 6/30/2026 | 9/30/2026 |
| Use in Data Import | 1/15/2026 | 3/31/2026 |
| Integration into MM for trustee use case | 3/31/2026 | 6/30/2026 |
| Integration into Private Credit Platform | 6/30/2026 | 9/30/2026 |
| MM 2.0 Rollout | 11/15/2025 | 1/31/2026 |
| ES removal from compliance | 12/1/2025 | 2/28/2026 |
| Tech Debt Mongo update | To do | 2/1/2026 |
| Tech debt ES removal from daily load | 2/1/2026 | 3/31/2026 |
| API 2.0 Rollout | 4/30/2026 | 5/30/2026 |
| Deal override enhancements | 2/15/2026 | 3/31/2026 |
| WSO API Integration | 4/30/2026 | 6/30/2026 |
| LevPro Integration | 9/30/2025 | 12/31/2025 |
| Compliance Library | 6/30/2026 | 9/30/2026 |
| Waterfall model integration into MM | 1/31/2026 | 5/31/2026 |
| View Management | 6/30/2026 | 9/30/2026 |
| Dashboard Integration for apollo | 3/31/2026 | 5/30/2026 |
| Enhancements to Hypo trading | 6/30/2026 | 9/30/2026 |
| Optimizer UI | 9/30/2026 | 12/31/2026 |
| Watefall input JSON from MM | 1/31/2026 | 3/31/2026 |
| Waterfall model output to MM | 3/1/2026 | 5/31/2026 |
| Waterfall Library | 5/31/2026 | 7/31/2026 |
| Deal creator integration into MM | 6/30/2026 | 9/30/2026 |
| Recon to use the data from common data layer | 6/30/2026 | 9/30/2026 |
| Recon app switching with MM | 6/1/2026 | 6/30/2026 |
| Apollo dashbords | 2/1/2026 | 3/31/2026 |
| More generic dashboards | 3/31/2026 | 6/30/2026 |
| Integration into MM | 3/31/2026 | 6/30/2026 |
| Integration into new Private credit platform | 3/31/2026 | 6/30/2026 |
| Sisense replacement capabilities | 9/30/2026 | 12/31/2026 |
| Data Import and Entitlements | 3/31/2026 | 6/30/2026 |
| Integrate compliance engine | 3/31/2026 | 6/30/2026 |
| Integrate Dashboards | 6/30/2026 | 9/30/2026 |
| Integrate waterfall and deal creator | 9/30/2026 | 12/31/2026 |
| Exploration service | 6/30/2026 | 9/30/2026 |
| Lender Migration | 1/1/2027 | 3/31/2027 |

## Version 2 (saved 2026-01-22)

Note of the change: Update roadmap_data.csv

Added:

| Task | Start | Finish |
| --- | --- | --- |
| Tech Debt Mongo update Compliance engine refactor | 2/1/2026 | 3/31/2026 |

Removed: Tech Debt Mongo update
